# Projet Brodeuse Numérique CNC

How a schedule from GanttProject changed from version to version. A marks actual dates.

## Version 1 (saved 2026-11-03)

Note of the change: mj du projet grant, plus redesign de l'arborécence

| ID | WBS | Task | Duration | Start | Finish | Predecessors | Complete |
| --- | --- | --- | --- | --- | --- | --- | --- |
| 1 | 1 | **Phase 1 : Cadrage & Spécifications** | 6d | 2026-09-26 | 2026-10-05 |  | 100% |
| 2 |  | Prise en main du sujet & définition du besoin | 2d | 2026-09-26 | 2026-09-29 |  | 100% |
| 3 |  | Analyse de la machine Janome Facility 21 | 2d | 2026-09-28 | 2026-09-29 | 2 | 100% |
| 4 |  | Rédaction du Cahier des Charges fonctionnel | 3d | 2026-09-29 | 2026-10-01 | 3 | 100% |
| 5 |  | Déploiement coffre Obsidian & arborescence Git | 2d | 2026-10-01 | 2026-10-02 | 4 | 100% |
| 6 | 2 | **Phase 2 : Études Préliminaires & Choix Techniques** | 25d | 2026-09-29 | 2026-11-02 |  | 100% |
| 7 |  | Analyse de la carte MKS Base V1.4 (ATmega2560) | 3d | 2026-09-29 | 2026-10-01 | 4 | 100% |
| 8 |  | Étude du variateur AC RobotDyn (découpe de phase) | 4d | 2026-09-30 | 2026-10-05 | 7 | 100% |
| 9 |  | Étude théorique Fast PWM vs découpe AC | 2d | 2026-09-30 | 2026-10-01 | 8 | 100% |
| 10 |  | Étude initiale de la fourche optique H21A1 | 4d | 2026-09-29 | 2026-10-02 | 4 | 100% |
| 11 |  | Conception PCB comparateur AOP pour H21A1 | 5d | 2026-09-30 | 2026-10-06 | 10 | 100% |
| 12 |  | Essais comparateurs (LM318, TL081, LM393) | 3d | 2026-10-20 | 2026-10-22 | 11 | 100% |
| 13 |  | Dimensionnement cinématique poulie encodeur | 2d | 2026-10-21 | 2026-10-22 | 3 | 100% |
| 14 | 3 | **Phase 3 : Expérimentation, Tests Manuels & Pivot** | 2d | 2026-11-02 | 2026-11-03 |  | 100% |
| 15 |  | Test manuel couture machine (carré piqué réussi) | 1d | 2026-11-02 | 2026-11-02 | 3 | 100% |
| 16 |  | Décision : Abandon H21A1 au profit du Fin de Course | 1d | 2026-11-02 | 2026-11-02 | 12, 15 | 100% |
| 17 |  | Choix du fin de course à galet (PMH & homing) | 1d | 2026-11-02 | 2026-11-02 | 16 | 100% |
| 18 |  | Validation encodeur rotatif SEN0230 (< 5000 tr/min) | 1d | 2026-11-02 | 2026-11-02 | 13, 16 | 100% |
| 19 |  | Établissement de la liste des besoins (BOM) | 1d | 2026-11-02 | 2026-11-02 | 17, 18 | 100% |
| 20 | 4 | **Phase 4 : Conception Mécanique & Approvisionnement** | 12d | 2026-11-04 | 2026-11-19 |  | 10% |
| 21 |  | Commande des composants et fournitures (BOM) | 5d | 2026-11-04 | 2026-11-10 | 19 |  |
| 22 |  | Revoir le design CAO du plateau de travail XY | 5d | 2026-11-04 | 2026-11-10 | 15 |  |
| 23 |  | Modélisation 3D poulie encodeur (16-18 dents) | 2d | 2026-11-04 | 2026-11-05 | 18 |  |
| 24 |  | Impression 3D poulie encodeur (PETG/Nylon) | 1d | 2026-11-06 | 2026-11-06 | 23 |  |
| 25 |  | Modélisation & impression support encodeur | 3d | 2026-11-07 | 2026-11-11 | 24 |  |
| 26 |  | Conception came d arbre & support switch PMH à galet | 3d | 2026-11-05 | 2026-11-09 | 17 |  |
| 27 |  | Supports et butées fins de course plateau X/Y | 3d | 2026-11-09 | 2026-11-11 | 22 |  |
| 28 |  | Fabrication / assemblage nouveau plateau de travail | 4d | 2026-11-11 | 2026-11-16 | 22 |  |
| 29 | 5 | **Phase 5 : Électronique, Câblage & Puissance** | 8d | 2026-11-11 | 2026-11-20 |  |  |
| 30 |  | Réception & contrôle des composants commandés | 1d | 2026-11-11 | 2026-11-11 | 21 |  |
| 31 |  | Intégration sous boîtier sécurisé variateur AC 230V | 3d | 2026-11-12 | 2026-11-16 | 30 |  |
| 32 |  | Câblage moteurs pas-à-pas X/Y sur MKS Base | 2d | 2026-11-12 | 2026-11-13 | 28 |  |
| 33 |  | Câblage fins de course (Aiguille PMH, X-Min, Y-Min) | 2d | 2026-11-13 | 2026-11-16 | 26, 27 |  |
| 34 |  | Câblage encodeur SEN0230 sur MKS Base | 1d | 2026-11-16 | 2026-11-16 | 25, 30 |  |
| 35 |  | Validation électrique globale sous tension (12V/230V) | 2d | 2026-11-17 | 2026-11-18 | 31, 32, 33, 34 |  |
| 36 | 6 | **Phase 6 : Développement Firmware Arduino (C++)** | 15d | 2026-11-16 | 2026-12-04 |  |  |
| 37 |  | Routine interruption ZC & commande TRIAC AC | 4d | 2026-11-16 | 2026-11-19 | 31 |  |
| 38 |  | Routine décodage impulsions encodeur SEN0230 | 3d | 2026-11-18 | 2026-11-20 | 34 |  |
| 39 |  | Séquence de Homing aiguille au PMH (galet) | 2d | 2026-11-20 | 2026-11-23 | 33 |  |
| 40 |  | Séquence de Homing axes plateau X/Y | 2d | 2026-11-21 | 2026-11-24 | 32, 33 |  |
| 41 |  | Machine à états synchronisation aiguille / avance XY | 5d | 2026-11-24 | 2026-11-30 | 37, 38, 39, 40 |  |
| 42 |  | Interpréteur G-code & pilotage pas-à-pas (A4982) | 4d | 2026-11-27 | 2026-12-02 | 41 |  |
| 43 | 7 | **Phase 7 : Suite Logicielle Python Hôte** | 16d | 2026-11-20 | 2026-12-11 |  |  |
| 44 |  | Streamer USB série avec acquittement ok | 3d | 2026-11-20 | 2026-11-24 | 7 |  |
| 45 |  | Module vectorisation & extraction points SVG | 5d | 2026-11-24 | 2026-11-30 | 44 |  |
| 46 |  | Générateur de G-code spécialisé broderie | 4d | 2026-11-30 | 2026-12-03 | 45 |  |
| 47 |  | Visualiseur graphique 2D des trajectoires | 3d | 2026-12-03 | 2026-12-07 | 46 |  |
| 48 | 8 | **Phase 8 : Intégration Globale & Essais Avant Noël** | 11d | 2026-12-04 | 2026-12-18 |  |  |
| 49 |  | Essais à vide : mouvement cadre synchronisé sans fil | 3d | 2026-12-04 | 2026-12-08 | 42, 44 |  |
| 50 |  | Première broderie réelle : carré automatique | 3d | 2026-12-08 | 2026-12-10 | 46, 49 |  |
| 51 |  | Optimisation vitesse & réglage découpe de phase | 3d | 2026-12-11 | 2026-12-15 | 50 |  |
| 52 |  | Broderie d un motif complet avant Noël | 3d | 2026-12-15 | 2026-12-17 | 47, 51 |  |
| 53 | 9 | **Trêve Hivernale : Vacances de Noël (Activité Réduite)** | 10d | 2026-12-19 | 2027-01-01 |  |  |
| 54 |  | Pause de Noël & veille documentaire (peu de travail) | 10d | 2026-12-19 | 2027-01-01 |  |  |
| 55 | 10 | **Phase 9 : Finalisation, Rapport & Soutenance (Janvier)** | 19d | 2027-01-04 | 2027-01-28 |  |  |
| 56 |  | Rédaction intensive du rapport LaTeX (manuscrit) | 10d | 2027-01-04 | 2027-01-15 | 52, 54 |  |
| 57 |  | Diaporama soutenance & montage vidéo démo | 5d | 2027-01-15 | 2027-01-21 | 56 |  |
| 58 |  | Répétitions orales & réglage timing présentation | 4d | 2027-01-22 | 2027-01-27 | 57 |  |
| 59 |  | SOUTENANCE ORALE FINALE (DEADLINE 28 JANVIER) | 0d | 2027-01-28 | 2027-01-28 | 58 |  |

## Version 2 (saved 2026-11-04)

Note of the change: mj gantt

Last finish 2027-01-28 → 2027-01-29 (+1d). Complete tasks 16 → 14.

Removed: 13 Dimensionnement cinématique poulie encodeur; 18 Validation encodeur rotatif SEN0230 (< 5000 tr/min); 23 Modélisation 3D poulie encodeur (16-18 dents); 24 Impression 3D poulie encodeur (PETG/Nylon); 25 Modélisation & impression support encodeur; 34 Câblage encodeur SEN0230 sur MKS Base; 38 Routine décodage impulsions encodeur SEN0230

Changed:

| ID | Task | Start | Finish | Duration | Complete | Predecessors |
| --- | --- | --- | --- | --- | --- | --- |
| 1 | **Phase 1 : Cadrage & Spécifications** | 2026-09-26 → 2026-09-28 (+2d) | 2026-10-05 → 2026-10-08 (+3d) | 6d → 9d |  |  |
| 2 | Prise en main du sujet & définition du besoin | 2026-09-26 → 2026-09-28 (+2d) |  |  |  |  |
| 3 | Analyse de la machine Janome Facility 21 | 2026-09-28 → 2026-09-30 (+2d) | 2026-09-29 → 2026-10-01 (+2d) |  |  |  |
| 4 | Rédaction du Cahier des Charges fonctionnel | 2026-09-29 → 2026-10-02 (+3d) | 2026-10-01 → 2026-10-06 (+5d) |  |  |  |
| 5 | Déploiement coffre Obsidian & arborescence Git | 2026-10-01 → 2026-10-07 (+6d) | 2026-10-02 → 2026-10-08 (+6d) |  |  |  |
| 6 | **Phase 2 : Études Préliminaires & Choix Techniques** | 2026-09-29 → 2026-10-07 (+8d) | 2026-11-02 → 2026-10-22 (-11d) | 25d → 12d |  |  |
| 7 | Analyse de la carte MKS Base V1.4 (ATmega2560) | 2026-09-29 → 2026-10-07 (+8d) | 2026-10-01 → 2026-10-09 (+8d) |  |  |  |
| 8 | Étude du variateur AC RobotDyn (découpe de phase) | 2026-09-30 → 2026-10-12 (+12d) | 2026-10-05 → 2026-10-15 (+10d) |  |  |  |
| 9 | Étude théorique Fast PWM vs découpe AC | 2026-09-30 → 2026-10-16 (+16d) | 2026-10-01 → 2026-10-19 (+18d) |  |  |  |
| 10 | Étude initiale de la fourche optique H21A1 | 2026-09-29 → 2026-10-07 (+8d) | 2026-10-02 → 2026-10-12 (+10d) |  |  |  |
| 11 | Conception PCB comparateur AOP pour H21A1 | 2026-09-30 → 2026-10-13 (+13d) | 2026-10-06 → 2026-10-19 (+13d) |  |  |  |
| 13 | **Phase 3 : Expérimentation, Tests Manuels & Pivot** | 2026-11-02 → 2026-10-02 (-31d) | 2026-11-03 → 2026-10-27 (-7d) | 2d → 18d |  |  |
| 14 | Test manuel couture machine (carré piqué réussi) | 2026-11-02 → 2026-10-02 (-31d) | 2026-11-02 → 2026-10-02 (-31d) |  |  |  |
| 15 | Décision : Abandon H21A1 au profit du Fin de Course | 2026-11-02 → 2026-10-23 (-10d) | 2026-11-02 → 2026-10-23 (-10d) |  |  |  |
| 16 | Choix du fin de course à galet (PMH & homing) | 2026-11-02 → 2026-10-26 (-7d) | 2026-11-02 → 2026-10-26 (-7d) |  |  |  |
| 17 | Établissement de la liste des besoins (BOM) | 2026-11-02 → 2026-10-27 (-6d) | 2026-11-02 → 2026-10-27 (-6d) |  |  | 16, Validation encodeur rotatif SEN0230 (< 5000 tr/min) → 16 |
| 18 | **Phase 4 : Conception Mécanique & Approvisionnement** | 2026-11-04 → 2026-10-05 (-30d) | 2026-11-19 → 2026-11-03 (-16d) | 12d → 22d | 10% → 0% |  |
| 19 | Commande des composants et fournitures (BOM) | 2026-11-04 → 2026-10-28 (-7d) | 2026-11-10 → 2026-11-03 (-7d) |  |  |  |
| 20 | Revoir le design CAO du plateau de travail XY | 2026-11-04 → 2026-10-05 (-30d) | 2026-11-10 → 2026-10-09 (-32d) |  |  |  |
| 21 | Conception came d arbre & support switch PMH à galet | 2026-11-05 → 2026-10-27 (-9d) | 2026-11-09 → 2026-10-29 (-11d) |  |  |  |
| 22 | Supports et butées fins de course plateau X/Y | 2026-11-09 → 2026-10-12 (-28d) | 2026-11-11 → 2026-10-14 (-28d) |  |  |  |
| 23 | Fabrication / assemblage nouveau plateau de travail | 2026-11-11 → 2026-10-12 (-30d) | 2026-11-16 → 2026-10-15 (-32d) |  |  |  |
| 24 | **Phase 5 : Électronique, Câblage & Puissance** | 2026-11-11 → 2026-10-16 (-26d) | 2026-11-20 → 2026-11-11 (-9d) | 8d → 19d |  |  |
| 25 | Réception & contrôle des composants commandés | 2026-11-11 → 2026-11-04 (-7d) | 2026-11-11 → 2026-11-04 (-7d) |  |  |  |
| 26 | Intégration sous boîtier sécurisé variateur AC 230V | 2026-11-12 → 2026-11-05 (-7d) | 2026-11-16 → 2026-11-09 (-7d) |  |  |  |
| 27 | Câblage moteurs pas-à-pas X/Y sur MKS Base | 2026-11-12 → 2026-10-16 (-27d) | 2026-11-13 → 2026-10-19 (-25d) |  |  |  |
| 28 | Câblage fins de course (Aiguille PMH, X-Min, Y-Min) | 2026-11-13 → 2026-10-30 (-14d) | 2026-11-16 → 2026-11-02 (-14d) |  |  |  |
| 29 | Validation électrique globale sous tension (12V/230V) | 2026-11-17 → 2026-11-10 (-7d) | 2026-11-18 → 2026-11-11 (-7d) |  |  | 26, 27, 28, Câblage encodeur SEN0230 sur MKS Base → 26, 27, 28 |
| 30 | **Phase 6 : Développement Firmware Arduino (C++)** | 2026-11-16 → 2026-11-03 (-13d) | 2026-12-04 → 2026-11-26 (-8d) | 15d → 18d |  |  |
| 31 | Routine interruption ZC & commande TRIAC AC | 2026-11-16 → 2026-11-10 (-6d) | 2026-11-19 → 2026-11-13 (-6d) |  |  |  |
| 32 | Séquence de Homing aiguille au PMH (galet) | 2026-11-20 → 2026-11-03 (-17d) | 2026-11-23 → 2026-11-04 (-19d) |  |  |  |
| 33 | Séquence de Homing axes plateau X/Y | 2026-11-21 → 2026-11-03 (-18d) | 2026-11-24 → 2026-11-04 (-20d) |  |  |  |
| 34 | Machine à états synchronisation aiguille / avance XY | 2026-11-24 → 2026-11-16 (-8d) | 2026-11-30 → 2026-11-20 (-10d) |  |  | 31, Routine décodage impulsions encodeur SEN0230, 32, 33 → 31, 32, 33 |
| 35 | Interpréteur G-code & pilotage pas-à-pas (A4982) | 2026-11-27 → 2026-11-23 (-4d) | 2026-12-02 → 2026-11-26 (-6d) |  |  |  |
| 36 | **Phase 7 : Suite Logicielle Python Hôte** | 2026-11-20 → 2026-10-12 (-39d) | 2026-12-11 → 2026-10-30 (-42d) | 16d → 15d |  |  |
| 37 | Streamer USB série avec acquittement ok | 2026-11-20 → 2026-10-12 (-39d) | 2026-11-24 → 2026-10-14 (-41d) |  |  |  |
| 38 | Module vectorisation & extraction points SVG | 2026-11-24 → 2026-10-15 (-40d) | 2026-11-30 → 2026-10-21 (-40d) |  |  |  |
| 39 | Générateur de G-code spécialisé broderie | 2026-11-30 → 2026-10-22 (-39d) | 2026-12-03 → 2026-10-27 (-37d) |  |  |  |
| 40 | Visualiseur graphique 2D des trajectoires | 2026-12-03 → 2026-10-28 (-36d) | 2026-12-07 → 2026-10-30 (-38d) |  |  |  |
| 41 | **Phase 8 : Intégration Globale & Essais Avant Noël** | 2026-12-04 → 2026-11-27 (-7d) | 2026-12-18 → 2026-12-14 (-4d) | 11d → 12d |  |  |
| 42 | Essais à vide : mouvement cadre synchronisé sans fil | 2026-12-04 → 2026-11-27 (-7d) | 2026-12-08 → 2026-12-01 (-7d) |  |  |  |
| 43 | Première broderie réelle : carré automatique | 2026-12-08 → 2026-12-02 (-6d) | 2026-12-10 → 2026-12-04 (-6d) |  |  |  |
| 44 | Optimisation vitesse & réglage découpe de phase | 2026-12-11 → 2026-12-07 (-4d) | 2026-12-15 → 2026-12-09 (-6d) |  |  |  |
| 45 | Broderie d un motif complet avant Noël | 2026-12-15 → 2026-12-10 (-5d) | 2026-12-17 → 2026-12-14 (-3d) |  |  |  |
| 46 | **Trêve Hivernale : Vacances de Noël (Activité Réduite)** | 2026-12-19 → 2026-12-21 (+2d) |  |  |  |  |
| 47 | Pause de Noël & veille documentaire (peu de travail) | 2026-12-19 → 2026-12-21 (+2d) |  |  |  |  |
| 50 | Diaporama soutenance & montage vidéo démo | 2027-01-15 → 2027-01-18 (+3d) | 2027-01-21 → 2027-01-22 (+1d) |  |  |  |
| 51 | Répétitions orales & réglage timing présentation | 2027-01-22 → 2027-01-25 (+3d) | 2027-01-27 → 2027-01-28 (+1d) |  |  |  |
| 52 | SOUTENANCE ORALE FINALE (DEADLINE 28 JANVIER) | 2027-01-28 → 2027-01-29 (+1d) | 2027-01-28 → 2027-01-29 (+1d) |  |  |  |
